# 草海典型性水域水生态保护与修复工程(施工总进度计划)

Schedule from a web Gantt chart, 2023-09-29 to 2024-12-31.
Every day is a working day

## Schedule

| ID | WBS | Task | Duration | Start | Finish | Predecessors | Status |
| --- | --- | --- | --- | --- | --- | --- | --- |
| 2 | 1 | **施工准备** | 80d | 2023-09-29 | 2023-12-17 |  |  |
| 3 | 1.1 | 施工图设计 | 30d | 2023-09-29 | 2023-10-28 |  |  |
| 4 | 1.2 | 省林业局审批手续 | 20d | 2023-10-29 | 2023-11-17 | 3 | waiting |
| 5 | 1.3 | 临时用地申请手续 | 30d | 2023-11-18 | 2023-12-17 | 4 | waiting |
| 6 | 2 | **一、退耕还湖湿地** | 299d | 2023-11-18 | 2024-09-11 |  |  |
| 7 | 2.1 | **生态围隔布设工程** | 20d | 2023-11-18 | 2023-12-07 |  |  |
| 8 | 2.1.1 | 拦鱼网布设 | 20d | 2023-11-18 | 2023-12-07 | 4 | waiting |
| 9 | 2.2 | **水生植物恢复工程** | 180d | 2023-12-08 | 2024-06-04 |  |  |
| 10 | 2.2.1 | 沉水植物种植及补种 | 180d | 2023-12-08 | 2024-06-04 | 8 | waiting |
| 11 | 2.3 | **鱼类种群调控工程** | 10d | 2024-09-02 | 2024-09-11 |  |  |
| 12 | 2.3.1 | 鱼类投放 | 10d | 2024-09-02 | 2024-09-11 |  | waiting |
| 13 | 3 | **二、入湖河口湿地** | 342d | 2024-01-09 | 2024-12-15 |  |  |
| 14 | 3.1 | **临时场地场地建设** | 62d | 2024-01-09 | 2024-03-10 |  |  |
| 15 | 3.1.1 | 临时场地基础建设 | 25d | 2024-01-09 | 2024-02-02 |  |  |
| 16 | 3.1.2 | 临时场地设备进场及安装 | 20d | 2024-02-20 | 2024-03-10 |  |  |
| 17 | 3.2 | **生态围隔布设工程（拦鱼网布设已完成）** | 20d | 2024-05-01 | 2024-05-20 |  |  |
| 18 | 3.2.1 | 软围隔布设 | 20d | 2024-05-01 | 2024-05-20 |  |  |
| 19 | 3.3 | **鱼类种群调控工程** | 209d | 2024-05-21 | 2024-12-15 |  |  |
| 20 | 3.3.1 | 清除鱼类 | 30d | 2024-05-21 | 2024-06-19 | 18 | waiting |
| 21 | 3.3.2 | 鱼类投放（局部调控） | 10d | 2024-12-06 | 2024-12-15 | 28 | waiting |
| 22 | 3.4 | **表层浮泥清除** | 240d | 2024-03-11 | 2024-11-05 |  |  |
| 23 | 3.4.1 | 清除表层浮泥第一期 | 30d | 2024-03-11 | 2024-04-09 | 16 | waiting |
| 24 | 3.4.2 | 六个月观察期 | 180d | 2024-04-10 | 2024-10-06 | 23 | waiting |
| 25 | 3.4.3 | 清除表层浮泥第二期 | 30d | 2024-10-07 | 2024-11-05 | 24 | waiting |

| ID | WBS | Task | Duration | Start | Finish | Predecessors | Status |
| --- | --- | --- | --- | --- | --- | --- | --- |
| 26 | 3.5 | **水生植物恢复工程** | 240d | 2024-04-10 | 2024-12-05 |  |  |
| 27 | 3.5.1 | 沉水植物种植及补种第一期（约8.67万平方） | 60d | 2024-04-10 | 2024-06-08 | 23 | waiting |
| 28 | 3.5.2 | 沉水植物种植及补种第二期（约3.3万平方） | 30d | 2024-11-06 | 2024-12-05 | 25 | waiting |
| 29 | 4 | **三、敞水区** | 130d | 2024-05-01 | 2024-09-07 |  |  |
| 30 | 4.1 | **生态围隔布设工程** | 20d | 2024-05-01 | 2024-05-20 |  |  |
| 31 | 4.1.1 | 不透水围隔 | 20d | 2024-05-01 | 2024-05-20 |  |  |
| 32 | 4.1.2 | 拦鱼网 | 20d | 2024-05-01 | 2024-05-20 |  |  |
| 33 | 4.2 | **鱼类种群调控工程** | 110d | 2024-05-21 | 2024-09-07 |  |  |
| 34 | 4.2.1 | 清除鱼类 | 10d | 2024-05-21 | 2024-05-30 | 31, 32 | waiting |
| 35 | 4.2.2 | 鱼类投放 | 10d | 2024-08-29 | 2024-09-07 | 37 | waiting |
| 36 | 4.3 | **水生植物恢复工程** | 90d | 2024-05-31 | 2024-08-28 |  |  |
| 37 | 4.3.1 | 沉水植物种植及补种 | 90d | 2024-05-31 | 2024-08-28 | 34 | waiting |
| 38 | 5 | **四、水生态监管能力建设** | 366d | 2024-01-01 | 2024-12-31 |  |  |
| 39 | 5.1 | 跟踪监测评估 | 366d | 2024-01-01 | 2024-12-31 |  |  |
| 40 | 5.2 | 测藻仪采购及安装 | 275d | 2024-04-01 | 2024-12-31 |  |  |
| 41 | 5.3 | 水生态管理能力建设报告编制 | 275d | 2024-04-01 | 2024-12-31 |  |  |
